# Gantt

Schedule from MS Project, 2018-09-10 to 2022-01-21.
HP

## Calendars

- Estándar: Mon-Fri 09:00-13:00, 15:00-19:00; Sat-Sun off.

## Schedule

| ID | WBS | Task | Type | Duration | Start | Finish | Predecessors | Total slack | Constraint |
| --- | --- | --- | --- | --- | --- | --- | --- | --- | --- |
| 1 | 1 | Kick-Off meeting | milestone | 0d | 2018-09-10 | 2018-09-10 |  | 0d | start no earlier than 2018-09-10 |
| 2 | 2 | **Project Management** |  | 880d | 2018-09-10 | 2022-01-21 |  | 0d |  |
| 3 | 2.1 | Project management plan | milestone | 0d | 2018-10-05 | 2018-10-05 | 1FS+1mo, 4FF, 21FF | 0d | finish no later than 2018-10-05 |
| 4 | 2.2 | Development of the project management plan |  | 20d | 2018-09-10 | 2018-10-05 | 1SS | 0d |  |
| 5 | 2.3 | **Monitoring of the Project** |  | 880d | 2018-09-10 | 2022-01-21 |  | 0d |  |
| 6 | 2.3.1 | Meetings |  | 880d | 2018-09-10 | 2022-01-21 | 1SS | 0d |  |
| 7 | 2.3.2 | Task tracking and scheduling |  | 880d | 2018-09-10 | 2022-01-21 | 1SS | 0d |  |
| 8 | 2.4 | Annual Reporting |  | 880d | 2018-09-10 | 2022-01-21 | 1SS | 0d |  |
| 9 | 2.5 | Project Implementation of risk management |  | 880d | 2018-09-10 | 2022-01-21 | 1SS | 0d |  |
| 10 | 3 | **Quality and Administration** |  | 880d | 2018-09-10 | 2022-01-21 |  | 0d |  |
| 11 | 3.1 | **Human resources** |  | 860d | 2018-10-08 | 2022-01-21 |  | 0d |  |
| 12 | 3.1.1 | Employment of the necessary staff |  | 30d | 2018-10-08 | 2018-11-16 | 3 | 0d |  |
| 13 | 3.1.2 | Human resources management |  | 830d | 2018-11-19 | 2022-01-21 | 12 | 0d |  |
| 14 | 3.2 | **Financial Plan** |  | 20d | 2018-09-10 | 2018-10-05 |  | 0d |  |
| 15 | 3.2.1 | **Costs** |  | 4d | 2018-09-10 | 2018-09-13 |  | 0d |  |
| 16 | 3.2.1.1 | Fix |  | 2d | 2018-09-10 | 2018-09-11 | 1SS | 0d |  |
| 17 | 3.2.1.2 | Variable |  | 2d | 2018-09-12 | 2018-09-13 | 16 | 0d |  |
| 18 | 3.2.2 | Funding |  | 3d | 2018-09-14 | 2018-09-18 | 17 | 0d |  |
| 19 | 3.2.3 | Economic feasibility |  | 5d | 2018-09-19 | 2018-09-25 | 18 | 0d |  |
| 20 | 3.2.4 | Evolution monitoring |  | 5d | 2018-09-26 | 2018-10-02 | 19 | 0d |  |
| 21 | 3.2.5 | Additional and follow-up funding seek |  | 3d | 2018-10-03 | 2018-10-05 | 20 | 0d |  |
| 22 | 3.3 | **Documentation Management** |  | 880d | 2018-09-10 | 2022-01-21 |  | 0d |  |
| 23 | 3.3.1 | Guidelines preparation |  | 880d | 2018-09-10 | 2022-01-21 | 1SS | 0d |  |
| 24 | 3.3.2 | Document revision |  | 880d | 2018-09-10 | 2022-01-21 | 1SS | 0d |  |
| 25 | 3.3.3 | Document rectification |  | 880d | 2018-09-10 | 2022-01-21 | 1SS | 0d |  |
| 26 | 3.3.4 | Document approval |  | 880d | 2018-09-10 | 2022-01-21 | 1SS | 0d |  |
| 27 | 3.4 | Periodic Monitoring |  | 880d | 2018-09-10 | 2022-01-21 | 1SS | 0d |  |

| ID | WBS | Task | Type | Duration | Start | Finish | Predecessors | Total slack | Constraint |
| --- | --- | --- | --- | --- | --- | --- | --- | --- | --- |
| 28 | 4 | **State of the Art** |  | 60d | 2018-10-08 | 2018-12-28 |  | 0d |  |
| 29 | 4.1 | State of the Art report | milestone | 0d | 2018-12-28 | 2018-12-28 | 1FS+4mo, 32FF, 35FF, 41FF | 0d | finish no later than 2018-12-28 |
| 30 | 4.2 | **Payloads** |  | 60d | 2018-10-08 | 2018-12-28 |  | 0d |  |
| 31 | 4.2.1 | Search for current space applications |  | 35d | 2018-10-08 | 2018-11-23 | 3 | 0d |  |
| 32 | 4.2.2 | Requirements definition |  | 25d | 2018-11-26 | 2018-12-28 | 31 | 0d |  |
| 33 | 4.3 | **Modular System** |  | 60d | 2018-10-08 | 2018-12-28 |  | 0d |  |
| 34 | 4.3.1 | Search for current modular systems with space applications |  | 30d | 2018-10-08 | 2018-11-16 | 3 | 0d |  |
| 35 | 4.3.2 | Requirements definition |  | 30d | 2018-11-19 | 2018-12-28 | 34 | 0d |  |
| 36 | 4.4 | **Urban Development Applications with Space Technologies** |  | 60d | 2018-10-08 | 2018-12-28 |  | 0d |  |
| 37 | 4.4.1 | **Search for current space applications** |  | 20d | 2018-10-08 | 2018-11-02 |  | 0d |  |
| 38 | 4.4.1.1 | Weather forecast |  | 20d | 2018-10-08 | 2018-11-02 | 3 | 0d |  |
| 39 | 4.4.1.2 | Urban planning (3D models) |  | 20d | 2018-10-08 | 2018-11-02 | 3 | 0d |  |
| 40 | 4.4.1.3 | Greenhouse emissions reductions (pollution) |  | 20d | 2018-10-08 | 2018-11-02 | 3 | 0d |  |
| 41 | 4.4.2 | Requirements definition |  | 40d | 2018-11-05 | 2018-12-28 | 37 | 0d |  |
| 42 | 5 | **Product development** |  | 500d | 2018-12-31 | 2020-11-27 |  | 0d |  |
| 43 | 5.1 | **Preliminary design** |  | 240d | 2018-12-31 | 2019-11-29 |  | 0d |  |
| 44 | 5.1.1 | **Payloads** |  | 120d | 2018-12-31 | 2019-06-14 |  | 0d |  |
| 45 | 5.1.1.1 | Payload preliminary report | milestone | 0d | 2019-06-14 | 2019-06-14 | 1FS+10mo, 47FF | 0d | finish no later than 2019-06-14 |
| 46 | 5.1.1.2 | Research |  | 70d | 2018-12-31 | 2019-04-05 | 29 | 0d |  |
| 47 | 5.1.1.3 | Development |  | 50d | 2019-04-08 | 2019-06-14 | 46 | 0d |  |
| 48 | 5.1.2 | **Modular system** |  | 60d | 2019-06-17 | 2019-09-06 |  | 0d |  |
| 49 | 5.1.2.1 | Modular system preliminary design | milestone | 0d | 2019-09-06 | 2019-09-06 | 1FS+13mo, 53FF, 50FF | 0d | finish no later than 2019-09-06 |
| 50 | 5.1.2.2 | Development of physical framework for sensor blocks |  | 30d | 2019-06-17 | 2019-07-26 | 45 | 30d |  |
| 51 | 5.1.2.3 | Development of systems interaction and applications |  | 30d | 2019-06-17 | 2019-07-26 | 45 | 0d |  |
| 52 | 5.1.2.4 | Development of sensors data fusion software |  | 20d | 2019-07-29 | 2019-08-23 | 51 | 0d |  |
| 53 | 5.1.2.5 | Definition of SATCOM applications domains |  | 10d | 2019-08-26 | 2019-09-06 | 52 | 0d |  |

| ID | WBS | Task | Type | Duration | Start | Finish | Predecessors | Total slack | Free slack | Constraint |
| --- | --- | --- | --- | --- | --- | --- | --- | --- | --- | --- |
| 54 | 5.1.3 | **Interaction platform** |  | 60d | 2019-09-09 | 2019-11-29 |  | 0d |  |  |
| 55 | 5.1.3.1 | Interaction platform preliminary design | milestone | 0d | 2019-11-29 | 2019-11-29 | 1FS+16mo, 58FF | 0d |  | finish no later than 2019-11-29 |
| 56 | 5.1.3.2 | Implement web-based servers for sharing sensors data |  | 20d | 2019-09-09 | 2019-10-04 | 49 | 20d |  |  |
| 57 | 5.1.3.3 | Implement processing algorithms based on applications |  | 40d | 2019-09-09 | 2019-11-01 | 49 | 0d |  |  |
| 58 | 5.1.3.4 | Pre-design a full services stakeholders platform |  | 20d | 2019-11-04 | 2019-11-29 | 56, 57 | 0d |  |  |
| 59 | 5.2 | **Final Design** |  | 380d | 2019-06-17 | 2020-11-27 |  | 0d |  |  |
| 60 | 5.2.1 | Mid-term project report | milestone | 0d | 2020-05-15 | 2020-05-15 | 1FS+22mo | 0d |  | finish no later than 2020-05-15 |
| 61 | 5.2.2 | **Payloads** |  | 260d | 2019-06-17 | 2020-06-12 |  | 0d |  |  |
| 62 | 5.2.2.1 | Payload final design | milestone | 0d | 2020-06-12 | 2020-06-12 | 1FS+23mo, 64FF | 0d |  | finish no later than 2020-06-12 |
| 63 | 5.2.2.2 | Sensors final design |  | 200d | 2019-06-17 | 2020-03-20 | 45 | 0d |  |  |
| 64 | 5.2.2.3 | Sensors final technical specifications |  | 60d | 2020-03-23 | 2020-06-12 | 63 | 0d |  |  |
| 65 | 5.2.3 | **Modular System** |  | 260d | 2019-09-09 | 2020-09-04 |  | 0d |  |  |
| 66 | 5.2.3.1 | Modular system final design - milestone | milestone | 0d | 2020-09-04 | 2020-09-04 | 1FS+26mo, 69FF | 0d |  | finish no later than 2020-09-04 |
| 67 | 5.2.3.2 | Modular system final design |  | 200d | 2019-09-09 | 2020-06-12 | 49 | 0d |  |  |
| 68 | 5.2.3.3 | Sensors data fusion software final design |  | 200d | 2019-09-09 | 2020-06-12 | 49 | 0d |  |  |
| 69 | 5.2.3.4 | Modular system's final technical specifications |  | 60d | 2020-06-15 | 2020-09-04 | 67, 68 | 0d |  |  |
| 70 | 5.2.4 | **Interaction Platform** |  | 260d | 2019-12-02 | 2020-11-27 |  | 0d |  |  |
| 71 | 5.2.4.1 | Interaction platform final design | milestone | 0d | 2020-11-27 | 2020-11-27 | 1FS+29mo, 75FF, 73FF | 0d |  | finish no later than 2020-11-27 |
| 72 | 5.2.4.2 | Web based servers for data sharing final implementation |  | 100d | 2019-12-02 | 2020-04-17 | 55 | 1d | 0d |  |
| 73 | 5.2.4.3 | Processing algorithms based on applications final design |  | 180d | 2019-12-02 | 2020-08-07 | 55 | 80d |  |  |
| 74 | 5.2.4.4 | Full services stakeholders platform implementation |  | 135d | 2020-04-20 | 2020-10-23 | 72 | 1d | 0d |  |
| 75 | 5.2.4.5 | Final technical specifications |  | 24d | 2020-10-26 | 2020-11-26 | 74 | 1d |  |  |
| 76 | 6 | **Simulation, testing, validation and quality** |  | 420d | 2020-06-15 | 2022-01-21 |  | 0d |  |  |
| 77 | 6.1 | Prototype manufacturing | milestone | 0d | 2021-04-16 | 2021-04-16 | 1FS+34mo, 79FF, 80FF, 81FF | 0d |  | finish no later than 2021-04-16 |

| ID | WBS | Task | Type | Duration | Start | Finish | Predecessors | Total slack | Free slack | Constraint |
| --- | --- | --- | --- | --- | --- | --- | --- | --- | --- | --- |
| 78 | 6.2 | **Technology Demonstrator Prototype Manufacturing** |  | 220d | 2020-06-15 | 2021-04-16 |  | 0d |  |  |
| 79 | 6.2.1 | Manufacturing of payload sensors |  | 100d | 2020-06-15 | 2020-10-30 | 62 | 120d | 0d |  |
| 80 | 6.2.2 | Manufacturing of modular system |  | 100d | 2020-09-07 | 2021-01-22 | 66 | 60d | 0d |  |
| 81 | 6.2.3 | Implementation of interaction platform |  | 100d | 2020-11-30 | 2021-04-16 | 71 | 0d |  |  |
| 82 | 6.3 | Payload Validation |  | 30d | 2020-11-02 | 2020-12-11 | 79 | 220d | 150d |  |
| 83 | 6.4 | Modular System Validation |  | 30d | 2021-01-25 | 2021-03-05 | 80 | 160d | 90d |  |
| 84 | 6.5 | Interaction Platform Validation |  | 30d | 2021-04-19 | 2021-05-28 | 81 | 30d |  |  |
| 85 | 6.6 | Individual systems testing | milestone | 0d | 2021-07-09 | 2021-07-09 | 1FS+37mo, 82FF, 83FF, 84FF | 0d |  | finish no later than 2021-07-09 |
| 86 | 6.7 | Full System Prototype Validation |  | 70d | 2021-07-12 | 2021-10-15 | 85 | 10d |  |  |
| 87 | 6.8 | Full system testing | milestone | 0d | 2021-10-29 | 2021-10-29 | 1FS+41mo, 86FF | 0d |  | finish no later than 2021-10-29 |
| 88 | 6.9 | Quality of the product |  | 50d | 2021-11-01 | 2022-01-07 | 87 | 10d |  |  |
| 89 | 6.10 | Final report | milestone | 0d | 2022-01-21 | 2022-01-21 | 1FS+44mo, 6FF, 7FF, 8FF, 9FF, 13FF, 23FF, 24FF, 25FF, 26FF, 27FF, 88FF, 102FF, 104FF, 105FF, 107FF, 108FF | 0d |  | finish no later than 2022-01-21 |
| 90 | 7 | **Business planning and exploitation of results** |  | 20d | 2018-09-10 | 2018-10-05 |  | 0d |  |  |
| 91 | 7.1 | Bussines plan | milestone | 0d | 2018-10-05 | 2018-10-05 | 1FS+1mo, 96FF | 0d |  | finish no later than 2018-10-05 |
| 92 | 7.2 | **Market Approach** |  | 10d | 2018-09-10 | 2018-09-21 |  | 2d | 0d |  |
| 93 | 7.2.1 | Study of stakeholders |  | 8d | 2018-09-10 | 2018-09-19 | 1 | 864d |  |  |
| 94 | 7.2.2 | Procurement conditions negotation |  | 5d | 2018-09-10 | 2018-09-14 | 1 | 867d |  |  |
| 95 | 7.2.3 | Resources purchase |  | 10d | 2018-09-10 | 2018-09-21 | 1 | 2d |  |  |
| 96 | 7.3 | Exploitation and Business Plans |  | 8d | 2018-09-24 | 2018-10-03 | 92 | 2d |  |  |
| 97 | 8 | **Communication and dissemination strategies** |  | 880d | 2018-09-10 | 2022-01-21 |  | 0d |  |  |
| 98 | 8.1 | Communication plan | milestone | 0d | 2018-10-05 | 2018-10-05 | 1FS+1mo, 99FF | 0d |  | finish no later than 2018-10-05 |
| 99 | 8.2 | Dissemination and Communication plan |  | 1mo | 2018-09-10 | 2018-10-05 | 1 | 0d |  |  |
| 100 | 8.3 | **On-line Dissemination/Communication Activities** |  | 860d | 2018-10-08 | 2022-01-21 |  | 0d |  |  |
| 101 | 8.3.1 | Web site development |  | 90d | 2018-10-08 | 2019-02-08 | 98 | 0d |  |  |
| 102 | 8.3.2 | Social media management |  | 770d | 2019-02-11 | 2022-01-21 | 101 | 0d |  |  |

| ID | WBS | Task | Duration | Start | Finish | Predecessors | Total slack |
| --- | --- | --- | --- | --- | --- | --- | --- |
| 103 | 8.4 | **Off-line Dissemination/Communication Activities** | 850d | 2018-10-08 | 2022-01-07 |  | 10d |
| 104 | 8.4.1 | Conferences | 800d | 2018-10-08 | 2021-10-29 | 3 | 60d |
| 105 | 8.4.2 | Meetings | 850d | 2018-10-08 | 2022-01-07 | 3 | 10d |
| 106 | 8.5 | **Production of Dissemination Materials** | 850d | 2018-10-08 | 2022-01-07 |  | 10d |
| 107 | 8.5.1 | Technology demonstrators | 850d | 2018-10-08 | 2022-01-07 | 3 | 10d |
| 108 | 8.5.2 | Audio visual material production | 500d | 2018-10-08 | 2020-09-04 | 3 | 360d |
